# Commercial Office Space Construction

How a schedule from MS Project changed from version to version. A marks actual dates.

## Version 1 (saved 2020-10-23, file 13.1 Commercial Office Space Construction (Timeline View) - FINISH.mpp)

| ID | WBS | Task | Duration | Start | Finish | Predecessors | Total float | Constraint |
| --- | --- | --- | --- | --- | --- | --- | --- | --- |
| 1 | 1 | **General Conditions** | 24d | 2019-10-21 | 2019-11-21 |  | -0.06d |  |
| 2 |  | Receiving notice to proceed and sign contract | 3d | 2019-10-21 | 2019-10-23 |  | -0.06d | start no earlier than 2019-10-21 |
| 3 |  | Submitting bond and insurance documents | 2d | 2019-10-24 | 2019-10-25 | 2 | -0.06d |  |
| 4 |  | Preparing and submitting project schedule | 2d | 2019-10-28 | 2019-10-29 | 3 | -0.06d |  |
| 5 |  | Preparing and submitting schedule of values | 2d | 2019-10-30 | 2019-10-31 | 4 | -0.06d |  |
| 6 |  | Obtaining building permits | 4d | 2019-11-05 | 2019-11-08 | 5FS+2d | -0.06d |  |
| 7 |  | Building permits obtained | 0d | 2019-11-08 | 2019-11-08 | 6 | 329d |  |
| 8 |  | Submitting preliminary shop drawings | 2w | 2019-11-08 | 2019-11-21 | 6FS-1d | 92d |  |
| 9 |  | Submitting monthly requests for payment | 1d | 2019-10-24 | 2019-10-24 | 2 | 7d |  |
| 10 | 2 | **Long Lead Procurement** | 70d | 2019-10-25 | 2020-01-30 |  | 7d |  |
| 11 |  | Submitting shop drawings and order long lead items - steel | 2w | 2019-10-25 | 2019-11-07 | 9 | 7d |  |
| 12 |  | Submitting shop drawings and order long lead items - roofing | 2w | 2019-11-22 | 2019-12-05 | 8 | 261d |  |
| 13 |  | Submitting shop drawings and order long lead items - elevator | 2w | 2019-11-22 | 2019-12-05 | 8 | 251d |  |
| 14 |  | Submitting shop drawings and order long lead items - plumbing | 2w | 2019-11-22 | 2019-12-05 | 8 | 92d |  |
| 15 |  | Submitting shop drawings and order long lead items - electric | 2w | 2019-11-22 | 2019-12-05 | 8 | 92d |  |
| 16 |  | Submitting shop drawings and order long lead items - HVAC | 2w | 2019-11-22 | 2019-12-05 | 8 | 92d |  |
| 17 |  | Detail, fabricate and deliver steel | 12w | 2019-11-08 | 2020-01-30 | 11 | 7d |  |
| 18 |  | Procurement completed | 0d | 2020-01-30 | 2020-01-30 | 17 | 270d |  |
| 19 | 3 | **Mobilize on Site** | 11d? | 2019-10-24 | 2019-11-07 |  | 0d |  |
| 20 |  | Install temporary power | 2d | 2019-10-24 | 2019-10-25 | 2 | 0d |  |
| 21 |  | Install temporary water service | 2d | 2019-10-24 | 2019-10-25 | 2 | 0d |  |
| 22 |  | Set up site office | 3d | 2019-10-28 | 2019-10-30 | 20, 21 | 0d |  |
| 23 |  | Set line and grade benchmarks | 3d | 2019-10-31 | 2019-11-04 | 22 | 0d |  |
| 24 |  | Prepare site - lay down yard and temporary fencing | 2d | 2019-11-05 | 2019-11-06 | 23 | 0d |  |
| 25 |  | Mobilization completed | 1d? | 2019-11-07 | 2019-11-07 | 24 | 330d |  |
| 26 | 4 | **Site Grading and Utilities** | 35d | 2019-11-07 | 2019-12-25 |  | 0d |  |
| 27 |  | Clear and grub site | 3d | 2019-11-07 | 2019-11-11 | 22, 24 | 0d |  |
| 28 |  | Stone site access and temporary parking area | 2d | 2019-11-12 | 2019-11-13 | 27, 24 | 0d |  |
| 29 |  | Rough grade site (cut and fill) | 1w | 2019-11-14 | 2019-11-20 | 28 | 0d |  |
| 30 |  | Install storm drainage | 2w | 2019-11-21 | 2019-12-04 | 29 | 9d |  |
| 31 |  | Install exterior fire line and building fire riser | 2w | 2019-11-21 | 2019-12-04 | 29 | 0d |  |
| 32 |  | Perform final site grading | 2w | 2019-12-05 | 2019-12-18 | 30FF+1d, 31 | 0d |  |
| 33 |  | Erect building batter boards and layout building | 1w | 2019-12-19 | 2019-12-25 | 32 | 0d |  |
| 34 | 5 | **Excavation and Foundations** | 33d | 2019-12-26 | 2020-02-10 |  | 0d |  |
| 35 |  | Excavate foundations | 2w | 2019-12-26 | 2020-01-08 | 33 | 0d |  |
| 36 |  | Excavate elevator pit | 2d | 2019-12-26 | 2019-12-27 | 33 | 214d |  |
| 37 |  | Form column piers and spread foundations | 4d | 2020-01-09 | 2020-01-14 | 35 | 0d |  |
| 38 |  | Rough-in electric and plumbing in elevator | 4d | 2019-12-30 | 2020-01-02 | 36 | 214d |  |
| 39 |  | Form elevator pit walls | 4d | 2020-01-03 | 2020-01-08 | 38 | 214d |  |
| 40 |  | Set reinforcing and anchor bolts | 4d | 2020-01-15 | 2020-01-20 | 37 | 0d |  |
| 41 |  | Pour column piers and foundations | 5d | 2020-01-21 | 2020-01-27 | 40 | 0d |  |
| 42 |  | Pour concrete elevator walls | 1d | 2020-01-09 | 2020-01-09 | 39 | 214d |  |
| 43 |  | Cure elevator wall concrete | 7d | 2020-01-10 | 2020-01-20 | 42 | 214d |  |
| 44 |  | Cure piers and foundations | 7d | 2020-01-28 | 2020-02-05 | 41 | 0d |  |
| 45 |  | Strip wall forms | 1d | 2020-01-21 | 2020-01-21 | 43 | 214d |  |
| 46 |  | Strip column piers and foundation forms | 3d | 2020-02-06 | 2020-02-10 | 44 | 0d |  |
| 47 |  | Install pneumatic tube in elevator pit | 3d | 2020-01-22 | 2020-01-24 | 45 | 214d |  |
| 48 |  | Prepare and pour concrete floor in elevator pit | 1d | 2020-01-27 | 2020-01-27 | 47 | 214d |  |
| 49 | 6 | **Column Erection and Miscellaneous steel works** | 50d | 2020-02-11 | 2020-04-20 |  | 0d |  |
| 50 |  | Erect steel columns, beams and joint - 1st and 2nd floors | 3w | 2020-02-11 | 2020-03-02 | 46, 17 | 0d |  |
| 51 |  | Erect steel columns, beams and joint - 3rd floor and roof | 2w | 2020-03-03 | 2020-03-16 | 50 | 0d |  |
| 52 |  | Install miscellaneous iron and bracing - 1st and 2nd floors | 2w | 2020-03-03 | 2020-03-16 | 50 | 164d |  |
| 53 |  | Install miscellaneous iron and bracing - 3rd floor and roof | 2w | 2020-03-17 | 2020-03-30 | 51 | 0d |  |
| 54 |  | Install stairs and miscellaneous iron railing | 2w | 2020-03-31 | 2020-04-13 | 53 | 0d |  |
| 55 |  | Touch-up paint on steel | 1w | 2020-04-14 | 2020-04-20 | 54 | 0d |  |
| 56 | 7 | **Forming, Pouring, & Curing - Floors and Roof** | 85d | 2020-03-03 | 2020-06-29 |  | 35d |  |
| 57 |  | Form 2nd floor including all floor openings | 5d | 2020-04-21 | 2020-04-27 | 55, 14, 15, 16, 50 | 0d |  |
| 58 |  | Install rebar and in-floor utilities (including mechanical, electrical, plumbing) | 5d | 2020-03-03 | 2020-03-09 | 50 | 35d |  |
| 59 |  | Pour 2nd floor slab | 4d | 2020-04-28 | 2020-05-01 | 58, 57 | 0d |  |
| 60 |  | Cure 2nd floor slab | 7d | 2020-05-04 | 2020-05-12 | 59 | 0d |  |
| 61 |  | Strip forms from 2nd floor slab | 2d | 2020-05-13 | 2020-05-14 | 60 | 99d |  |
| 62 |  | Form 3rd floor including all floor openings | 5d | 2020-05-13 | 2020-05-19 | 60 | 0d |  |
| 63 |  | Install rebar and in-floor utilities (including mechanical, electrical, plumbing) | 5d | 2020-05-13 | 2020-05-19 | 60 | 0d |  |
| 64 |  | Pour 3rd floor slab | 4d | 2020-05-20 | 2020-05-25 | 63, 62 | 0d |  |
| 65 |  | Cure 3rd floor slab | 7d | 2020-05-26 | 2020-06-03 | 64 | 0d |  |
| 66 |  | Strip forms from 3rd floor slab | 2d | 2020-06-04 | 2020-06-05 | 65 | 16d |  |
| 67 |  | Form roof slab including all floor openings | 5d | 2020-06-04 | 2020-06-10 | 65 | 0d |  |
| 68 |  | Install rebar and in-floor utilities (including mechanical, electrical, plumbing) | 5d | 2020-06-04 | 2020-06-10 | 65 | 0d |  |
| 69 |  | Pour roof slab | 4d | 2020-06-11 | 2020-06-16 | 68, 67 | 0d |  |
| 70 |  | Cure roof slab | 7d | 2020-06-17 | 2020-06-25 | 69 | 0d |  |

| ID | WBS | Task | Duration | Start | Finish | Predecessors | Total float |
| --- | --- | --- | --- | --- | --- | --- | --- |
| 71 |  | Strip forms from roof slab | 2d | 2020-06-26 | 2020-06-29 | 70 | 0d |
| 72 |  | Form 1st floor | 4d | 2020-05-15 | 2020-05-20 | 61 | 100d |
| 73 |  | Install electrical underground | 1w | 2020-05-15 | 2020-05-21 | 61 | 99d |
| 74 |  | Install plumbing underground | 1w | 2020-05-15 | 2020-05-21 | 61 | 99d |
| 75 |  | Install rebar and in-floor utilities | 4d | 2020-05-15 | 2020-05-20 | 61 | 100d |
| 76 |  | Pour 1st floor slab | 4d | 2020-05-22 | 2020-05-27 | 72, 75, 73, 74 | 99d |
| 77 |  | Cure 1st floor slab | 7d | 2020-05-28 | 2020-06-05 | 76 | 99d |
| 78 |  | Strip forms from 1st floor slab | 2d | 2020-06-08 | 2020-06-09 | 77 | 99d |
| 79 | 8 | **Carpentry Work** | 15d | 2020-06-30 | 2020-07-20 |  | 0d |
| 80 |  | Install exterior sheathing and metal studs | 3w | 2020-06-30 | 2020-07-20 | 66, 71 | 0d |
| 81 | 9 | **Masonry Work** | 110d | 2020-03-31 | 2020-09-01 |  | 80d |
| 82 |  | Rough-in plumbing at toilets and masonry walls | 4w | 2020-06-10 | 2020-07-07 | 78, 14 | 99d |
| 83 |  | Lay masonry at core, mechanical, and toilets | 4w | 2020-03-31 | 2020-04-27 | 52, 53 | 154d |
| 84 |  | Install exterior masonry work | 5w | 2020-07-21 | 2020-08-25 | 80 | 0d |
| 85 |  | Install roof drains | 2d | 2020-08-25 | 2020-08-27 | 84 | 73d |
| 86 |  | Install tile in toilet rooms | 2w | 2020-07-08 | 2020-07-21 | 82 | 99d |
| 87 |  | Clean masonry | 1w | 2020-08-25 | 2020-09-01 | 84 | 80d |
| 88 |  | Clean toilet room tile | 1w | 2020-07-22 | 2020-07-28 | 86 | 99d |
| 89 | 10 | **Roofing** | 815d | 2017-08-20 | 2020-10-06 |  | 0d |
| 90 |  | Install flashing at parapet walls | 4d | 2017-08-20 | 2017-08-23 | 85 |  |
| 91 |  | Pour lightweight concrete roof fill | 2d | 2020-08-27 | 2020-08-31 | 12, 85, 90 | 77d |
| 92 |  | Install seamless roofing material | 5d | 2020-09-07 | 2020-09-14 | 91FS+5d | 77d |
| 93 |  | Spread stone ballast on seamless roof | 5d | 2020-09-14 | 2020-09-21 | 92 | 77d |
| 94 |  | Set rooftop equipment | 2w | 2020-09-21 | 2020-10-06 | 93 | 77d |
| 95 | 11 | **Window wall and store front closures** | 60d | 2020-08-25 | 2020-11-18 |  | 0d |
| 96 |  | Install window wall aluminum and glass | 5w | 2020-08-25 | 2020-09-29 | 84 | 0d |
| 97 |  | Install interior stud walls and drywall | 5w | 2020-09-29 | 2020-11-04 | 96 | 0d |
| 98 |  | Install interior doors and hardware | 2w | 2020-11-04 | 2020-11-18 | 97 | 5d |
| 99 |  | Install store front doors and hardware | 3w | 2020-08-25 | 2020-09-15 | 84 | 35d |
| 100 | 12 | **Finishing Building Works** | 80d | 2020-09-29 | 2021-01-21 |  | 23d |
| 101 |  | Install millwork and wood trim | 3w | 2020-11-04 | 2020-11-25 | 99, 97 | 0d |
| 102 |  | Paint walls and woodwork | 4w | 2020-11-25 | 2020-12-23 | 101, 98 | 0d |
| 103 |  | Install conduit at ceiling plenum space | 3w | 2020-09-29 | 2020-10-21 | 96 | 25d |
| 104 |  | Install duct in ceiling plenum space | 3w | 2020-11-04 | 2020-11-25 | 97, 103 | 20d |
| 105 |  | Install ceiling grid | 2w | 2020-11-25 | 2020-12-09 | 97, 104 | 20d |
| 106 |  | Install ceiling tile | 2w | 2020-12-09 | 2020-12-23 | 105 | 20d |
| 107 |  | Hang wallpaper | 2w | 2020-12-09 | 2020-12-23 | 105 | 20d |
| 108 |  | Install building carpet | 4w | 2020-12-23 | 2021-01-21 | 102 | 0d |
| 109 |  | Install hardware and accessories | 3w | 2020-12-23 | 2021-01-14 | 102 | 5d |
| 110 |  | Complete interior and exterior sod and plantings | 2w | 2020-12-23 | 2021-01-07 | 102 | 7d |
| 111 |  | Pave, curb, and stripe parking lot | 2w | 2021-01-07 | 2021-01-21 | 110 | 7d |
| 112 |  | Building works finished | 0d | 2021-01-21 | 2021-01-21 | 111 | 23d |
| 113 | 13 | **Setting and Testing Elevators** | 40d | 2020-04-28 | 2020-06-22 |  | 154d |
| 114 |  | Set elevator equipment in shafts | 4w | 2020-04-28 | 2020-05-25 | 83, 48, 13 | 154d |
| 115 |  | Set equipment in mechanical room | 2w | 2020-05-26 | 2020-06-08 | 114 | 154d |
| 116 |  | Test and align doors and equipment | 2w | 2020-06-09 | 2020-06-22 | 115 | 154d |
| 117 | 14 | **Plumbing** | 90d | 2020-09-01 | 2021-01-07 |  | 33d |
| 118 |  | Rough-in plumbing in drywall walls | 4w | 2020-09-29 | 2020-10-28 | 96 | 35d |
| 119 |  | Tie-in fire line riser and set valves | 2w | 2020-09-01 | 2020-09-15 | 87 | 80d |
| 120 |  | Set plumbing fixtures and trim | 3w | 2020-10-28 | 2020-11-18 | 88, 118, 82 | 35d |
| 121 |  | Flush, test, and clean piping and fixtures | 2w | 2020-12-23 | 2021-01-07 | 102, 119, 120 | 10d |
| 122 |  | Plumbing works completed | 0d | 2021-01-07 | 2021-01-07 | 121 | 33d |
| 123 | 15 | **Electrical Works** | 139d | 2020-06-10 | 2020-12-23 |  | 43d |
| 124 |  | Rough-in electrical in masonry walls | 4w | 2020-06-10 | 2020-07-07 | 78, 15 | 99d |
| 125 |  | Rough-in electrical in drywall walls | 4w | 2020-09-29 | 2020-10-28 | 96 | 35d |
| 126 |  | Pull wire in conduit and set area transformers | 3w | 2020-10-21 | 2020-11-11 | 124, 103 | 25d |
| 127 |  | Install and terminate electrical devices | 3w | 2020-11-11 | 2020-12-02 | 126, 125 | 25d |
| 128 |  | Make electrical terminations for HVAC equipment | 2d | 2020-11-11 | 2020-11-13 | 126, 94 | 51d |
| 129 |  | Install light fixtures - test and clean | 2w | 2020-12-09 | 2020-12-23 | 105, 127 | 20d |
| 130 |  | Electrical works completed | 0d | 2020-12-23 | 2020-12-23 | 129 | 43d |
| 131 | 16 | **Heating and Ventilating - AC** | 180d | 2020-04-28 | 2021-01-07 |  | 33d |
| 132 |  | Set equipment in mechanical room | 2w | 2020-04-28 | 2020-05-11 | 83, 16 | 168d |
| 133 |  | Rough-in mechanical in masonry walls | 4w | 2020-06-10 | 2020-07-07 | 78 | 127d |
| 134 |  | Rough-in mechanical in drywall walls | 2w | 2020-09-29 | 2020-10-14 | 96 | 93d |
| 135 |  | Install duct in building chase | 3w | 2020-09-29 | 2020-10-21 | 132, 133, 96 | 68d |
| 136 |  | Set HVAC trim and test and balance system | 4w | 2020-12-09 | 2021-01-07 | 105, 135, 128 | 33d |
| 137 | 17 | **Final Clean-up and Occupancy** | 60d | 2020-11-04 | 2021-01-28 |  | 18d |
| 138 |  | Install hard tile flooring in common areas | 1w | 2020-11-04 | 2020-11-11 | 97 | 46d |
| 139 |  | Clean hard tile floors | 4d | 2020-11-11 | 2020-11-17 | 138 | 46d |
| 140 |  | Remove debris from building and do final clean-up | 4d | 2021-01-21 | 2021-01-27 | 108, 107, 109, 110, 121, 129, 106, 139 | 0d |

| ID | WBS | Task | Duration | Start | Finish | Predecessors | Total float |
| --- | --- | --- | --- | --- | --- | --- | --- |
| 141 |  | Substantial completion date | 1d | 2021-01-27 | 2021-01-28 | 140 | 18d |
| 142 |  | Ready for Occupancy | 0d | 2021-01-28 | 2021-01-28 | 141 | 18d |
| 143 | 18 | **Complete Final Inspections** | 6d | 2021-01-27 | 2021-02-04 |  | 0d |
| 144 |  | Complete elevator inspection and certification | 3d | 2021-01-27 | 2021-02-01 | 140, 116 | 0d |
| 145 |  | Perform architect's inspection | 1d | 2021-02-01 | 2021-02-02 | 140, 111, 144 | 0d |
| 146 |  | Perform local building agency inspection | 1d | 2021-02-02 | 2021-02-03 | 145 | 0d |
| 147 |  | Perform Fire Marshal's inspection | 1d | 2021-02-03 | 2021-02-04 | 146 | 0d |
| 148 |  | Final inspection completed | 0d | 2021-02-04 | 2021-02-04 | 147 | 13d |
| 149 | 19 | **Project Closure** | 13d | 2021-02-04 | 2021-02-23 |  | 0d |
| 150 |  | Complete punch list items from all inspections | 2w | 2021-02-04 | 2021-02-18 | 147 | 0d |
| 151 |  | Obtain certificate of occupancy | 2d | 2021-02-18 | 2021-02-22 | 150 | 0d |
| 152 |  | Issue final completion documents including warranties | 1d | 2021-02-18 | 2021-02-19 | 150 | 1d |
| 153 |  | Issue final request for payment | 1d | 2021-02-22 | 2021-02-23 | 151, 152 | 0d |
| 154 |  | Payments cleared & Project completed successfully | 0d | 2021-02-23 | 2021-02-23 | 153 | 0d |

## Version 2 (data date 2019-12-01, saved 2020-11-01, file 13.4 Commercial Office Space Construction (Reporting) - BEGIN.mpp)

Last finish stays 2021-02-23. Complete tasks 0 → 14.

Changed:

| ID | Task | Start | Finish | Duration | Complete | Total float |
| --- | --- | --- | --- | --- | --- | --- |
| 1 | **General Conditions** | 2019-10-21 A | 2019-11-21 A |  | 0% → 100% | -0.06d → none |
| 2 | Receiving notice to proceed and sign contract | 2019-10-21 A | 2019-10-23 A |  | 0% → 100% | -0.06d → none |
| 3 | Submitting bond and insurance documents | 2019-10-24 A | 2019-10-25 A |  | 0% → 100% | -0.06d → none |
| 4 | Preparing and submitting project schedule | 2019-10-28 A | 2019-10-29 A |  | 0% → 100% | -0.06d → none |
| 5 | Preparing and submitting schedule of values | 2019-10-30 A | 2019-10-31 A |  | 0% → 100% | -0.06d → none |
| 6 | Obtaining building permits | 2019-11-05 A | 2019-11-08 A |  | 0% → 100% | -0.06d → none |
| 7 | Building permits obtained | 2019-11-08 A | 2019-11-08 A |  | 0% → 100% | 329d → none |
| 8 | Submitting preliminary shop drawings | 2019-11-08 A | 2019-11-21 A |  | 0% → 100% | 92d → none |
| 9 | Submitting monthly requests for payment | 2019-10-24 A | 2019-10-24 A |  | 0% → 100% | 7d → none |
| 10 | **Long Lead Procurement** | 2019-10-25 A |  |  | 0% → 52% | 7d → 270d |
| 11 | Submitting shop drawings and order long lead items - steel | 2019-10-25 A | 2019-11-07 A |  | 0% → 100% | 7d → none |
| 12 | Submitting shop drawings and order long lead items - roofing | 2019-11-22 A | 2019-12-05 → 2019-11-29 A (-6d) | 2w → 1.2w | 0% → 100% | 261d → none |
| 13 | Submitting shop drawings and order long lead items - elevator | 2019-11-22 A | 2019-12-05 A |  | 0% → 100% | 251d → none |
| 14 | Submitting shop drawings and order long lead items - plumbing | 2019-11-22 A |  |  | 0% → 60% | 92d → 97d |
| 15 | Submitting shop drawings and order long lead items - electric | 2019-11-22 A |  |  | 0% → 60% | 92d → 97d |
| 16 | Submitting shop drawings and order long lead items - HVAC | 2019-11-22 A |  |  | 0% → 60% | 92d → 97d |
| 17 | Detail, fabricate and deliver steel | 2019-11-08 A |  |  | 0% → 27% |  |
| 19 | **Mobilize on Site** | 2019-10-24 A |  |  | 0% → 54% | 0d → 330d |
| 20 | Install temporary power | 2019-10-24 A | 2019-10-25 A |  | 0% → 100% | 0d → none |
| 21 | Install temporary water service | 2019-10-24 A | 2019-10-25 A |  | 0% → 100% | 0d → none |
| 22 | Set up site office | 2019-10-28 A | 2019-10-30 A |  | 0% → 100% | 0d → none |
